# SD17-V1研发计划

Schedule from a web Gantt chart, 2025-04-15 to 2025-08-27.
Sundays are off

## Schedule

| ID | WBS | Task | Duration | Start | Finish | Predecessors | Status | inPeople |
| --- | --- | --- | --- | --- | --- | --- | --- | --- |
| 2 | 1 | **结构设计** | 92d | 2025-04-15 | 2025-07-30 |  |  |  |
| 3 | 1.1 | ID+结构堆叠 | 26d | 2025-04-15 | 2025-05-14 |  |  |  |
| 4 | 1.2 | 结构评审和修改 | 4d | 2025-05-15 | 2025-05-19 | 3 | waiting |  |
| 5 | 1.3 | 第一阶段结构细化评审 | 1d | 2025-05-20 | 2025-05-20 | 4 | waiting |  |
| 6 | 1.4 | 供应商预选 | 1d | 2025-05-21 | 2025-05-21 | 5 | waiting |  |
| 7 | 1.5 | **DFM修改和评审** | 5d | 2025-05-22 | 2025-05-27 | 6 | waiting |  |
| 8 | 1.5.1 | 供应商输出DFM | 3d | 2025-05-22 | 2025-05-24 |  | waiting |  |
| 9 | 1.5.2 | DFM评审 | 1d | 2025-05-26 | 2025-05-26 | 8 | waiting |  |
| 10 | 1.5.3 | DFM修改确认 | 1d | 2025-05-27 | 2025-05-27 | 9 | waiting |  |
| 11 | 1.6 | 正式T0投模+修模 | 44d | 2025-05-28 | 2025-07-17 | 10 | waiting |  |
| 12 | 1.7 | 回T1结构模 | 11d | 2025-07-18 | 2025-07-30 | 11 | waiting |  |
| 13 | 2 | **硬件设计** | 45d | 2025-05-21 | 2025-07-11 |  |  | 汤勇 |
| 14 | 2.1 | 硬件原理图设计完成 | 7d | 2025-05-21 | 2025-05-28 | 5 | waiting |  |
| 15 | 2.2 | 硬件layout | 7d | 2025-05-29 | 2025-06-05 | 14 | waiting |  |
| 16 | 2.3 | 投PCB板+确认数量并回板 | 7d | 2025-06-06 | 2025-06-13 | 15 | waiting |  |
| 17 | 2.4 | 回PCBA板 | 4d | 2025-06-16 | 2025-06-19 | 16 | waiting |  |
| 18 | 2.5 | 硬件裸板调试 | 6d | 2025-06-19 | 2025-06-25 | 17 | waiting |  |
| 19 | 2.6 | 硬件单元测试完成 | 6d | 2025-06-26 | 2025-07-02 | 18 | waiting |  |
| 20 | 2.7 | T0研发装机30（美15+欧澳15） | 4d | 2025-07-08 | 2025-07-11 |  | waiting |  |
| 21 | 3 | **软件开发** | 34d | 2025-06-19 | 2025-07-28 |  |  |  |
| 22 | 3.1 | 裸板调试版本 | 7d | 2025-06-19 | 2025-06-26 | 17 | waiting |  |
| 23 | 3.2 | 单元测试版本 | 2d | 2025-06-27 | 2025-06-28 | 22 | waiting |  |
| 24 | 3.3 | 工厂版本转测 | 6d | 2025-06-30 | 2025-07-05 | 23 | waiting |  |
| 25 | 3.4 | 工厂版本测试完成 | 5d | 2025-07-07 | 2025-07-11 | 24 | waiting |  |
| 26 | 3.5 | 正式版本转测 | 5d | 2025-07-07 | 2025-07-11 | 24 | waiting |  |
| 27 | 3.6 | 正式版本测试完成 | 14d | 2025-07-12 | 2025-07-28 | 26 | waiting |  |

| ID | WBS | Task | Duration | Start | Finish | Predecessors | Status |
| --- | --- | --- | --- | --- | --- | --- | --- |
| 28 | 4 | **工厂小批** | 23d | 2025-07-03 | 2025-07-29 |  |  |
| 29 | 4.1 | 小批备料 | 13d | 2025-07-03 | 2025-07-17 | 19 | waiting |
| 30 | 4.2 | 回PCB,PCBA | 6d | 2025-07-18 | 2025-07-24 | 29 | waiting |
| 31 | 4.3 | NPI装机 | 2d | 2025-07-25 | 2025-07-26 | 30, 24 | waiting |
| 32 | 4.4 | 硬件单元测试 | 1d | 2025-07-28 | 2025-07-28 | 31 | waiting |
| 33 | 4.5 | 图像测试 | 1d | 2025-07-29 | 2025-07-29 | 32 | waiting |
| 34 | 5 | 备量产料 | 1d | 2025-08-27 | 2025-08-27 |  |  |
